# Scientific_Calculator

Schedule from MS Project, 2018-05-08 to 2018-06-06, 7 hours a day, A marks actual dates.
Planification de la réalisation d'une calculatrice scientifique
CPNV

## Calendars

- Standard: Mon 09:50-12:05, 13:30-15:00, 15:15-16:05; Tue 08:00-09:30, 09:50-12:10, 13:30-15:00, 15:20-16:50; Wed 08:00-09:30, 09:50-12:05, 13:30-15:00, 15:20-16:05; Thu 09:50-12:05, 13:30-15:00, 15:20-16:50; Fri-Sun off. Exceptions (off unless hours are given): 2018-05-10 to 2018-05-11 (Pont de l'Ascension), 2018-05-21 (lundi de Pentecôte).

## Schedule

| ID | WBS | Task | Type | Duration | Start | Finish | Predecessors | Complete | Remaining | Total slack | Free slack | Work | Actual work |
| --- | --- | --- | --- | --- | --- | --- | --- | --- | --- | --- | --- | --- | --- |
| 1 | 1 | **Totalité du projet** |  | 12.86d | 2018-05-08 09:00 A | 2018-06-06 11:40 |  | 8% | 11.85d | 0d |  | 182h | 15.75h |
| 2 | 1.1 | Rédaction de la Planification initiale |  | 2h | 2018-05-08 09:00 A | 2018-05-08 11:20 A |  | 100% |  |  |  | 2h | 2h |
| 3 | 1.2 | **Analyse** |  | 2.14d | 2018-05-08 11:20 A | 2018-05-15 08:35 |  | 76% | 0.52d | 10.43d |  | 17h | 13h |
| 4 | 1.2.1 | Création des Use Cases |  | 2h | 2018-05-08 11:20 A | 2018-05-08 14:40 A | 2 | 100% |  |  |  | 2h | 2h |
| 5 | 1.2.2 | Création des maquettes |  | 4h | 2018-05-08 14:40 A | 2018-05-09 10:30 | 4 | 96% | 0.15h | 11.71d |  | 5h | 4.5h |
| 6 | 1.2.3 | Création des scénarii |  | 4h | 2018-05-09 10:30 A | 2018-05-14 10:00 A | 5 | 100% |  |  |  | 5h | 5h |
| 7 | 1.2.4 | Création du Modèle Conceptuel de Données |  | 3h | 2018-05-14 10:00 A | 2018-05-14 14:25 | 6 | 33% | 2h | 0.14d | 0d | 3h | 1h |
| 8 | 1.2.5 | Création de Modèle Logique de Données |  | 2h | 2018-05-14 14:25 A | 2018-05-15 08:35 | 7 | 25% | 1.5h | 0.11d | 0d | 2h | 0.5h |
| 9 | 1.3 | Documentation de l'analyse |  | 5h | 2018-05-15 08:35 A | 2018-05-15 15:35 | 8 | 15% | 4.25h | 0d |  | 5h | 0.75h |
| 10 | 1.4 | **Implémentation & tests** |  | 8.29d | 2018-05-15 15:35 | 2018-06-05 08:10 |  |  |  | 0d |  | 58h |  |
| 11 | 1.4.1 | Implémentation de l'interface graphique |  | 3h | 2018-05-15 15:35 | 2018-05-16 10:05 | 9 |  |  | 0d |  | 3h |  |
| 12 | 1.4.2 | Implémentation de la base de données |  | 2h | 2018-05-16 10:05 | 2018-05-16 12:05 | 11 |  |  | 0d |  | 2h |  |
| 13 | 1.4.3 | Implémentation de la classe de calcul avec des calculs simples |  | 4h | 2018-05-16 13:30 | 2018-05-17 11:35 | 12 |  |  | 0d |  | 4h |  |
| 14 | 1.4.4 | Tests de la classe de calcul |  | 2h | 2018-05-17 11:35 | 2018-05-17 15:00 | 13 |  |  | 0d |  | 2h |  |
| 15 | 1.4.5 | Implémentation du système d'entrée utilisateur |  | 6h | 2018-05-17 15:20 | 2018-05-22 14:10 | 14 |  |  | 0d |  | 6h |  |
| 16 | 1.4.6 | Tests du système d'entrés utilisateur |  | 3h | 2018-05-22 14:10 | 2018-05-23 08:40 | 15 |  |  | 0d |  | 3h |  |
| 17 | 1.4.7 | Implémentation des calculs avancés |  | 4h | 2018-05-23 08:40 | 2018-05-23 14:25 | 16 |  |  | 0d |  | 4h |  |
| 18 | 1.4.8 | Tests des calculs avancés |  | 2h | 2018-05-23 14:25 | 2018-05-24 10:30 | 17 |  |  | 0d |  | 2h |  |
| 19 | 1.4.9 | Implémentation de l'historique des opérations |  | 5h | 2018-05-24 10:30 | 2018-05-28 10:15 | 18 |  |  | 0d |  | 5h |  |
| 20 | 1.4.10 | Tests de l'historique des opérations |  | 2h | 2018-05-28 10:15 | 2018-05-28 13:40 | 19 |  |  | 0d |  | 2h |  |
| 21 | 1.4.11 | Implémentation de l'utilisation des constantes |  | 5h | 2018-05-28 13:40 | 2018-05-29 11:10 | 20 |  |  | 0d |  | 5h |  |
| 22 | 1.4.12 | Tests de l'utilisation des constantes |  | 1h | 2018-05-29 11:10 | 2018-05-29 12:10 | 21 |  |  | 0d |  | 1h |  |
| 23 | 1.4.13 | Implémentation de la conversion de base numérique |  | 3h | 2018-05-29 13:30 | 2018-05-29 16:50 | 22 |  |  | 0d |  | 3h |  |
| 24 | 1.4.14 | Tests de la conversion de base numérique |  | 1h | 2018-05-30 08:00 | 2018-05-30 09:00 | 23 |  |  | 0d |  | 1h |  |
| 25 | 1.4.15 | Implémentation de l'affichage d'un graphe |  | 7h | 2018-05-30 09:00 | 2018-05-31 11:50 | 24 |  |  | 0d |  | 7h |  |
| 26 | 1.4.16 | Tests de l'affichage de graphe |  | 2h | 2018-05-31 11:50 | 2018-05-31 15:35 | 25 |  |  | 0d |  | 2h |  |
| 27 | 1.4.17 | Implémentation de la modification des paramètres |  | 4h | 2018-05-31 15:35 | 2018-06-04 14:00 | 26 |  |  | 0d |  | 4h |  |
| 28 | 1.4.18 | Tests de la modification des paramètres |  | 1h | 2018-06-04 14:00 | 2018-06-04 15:00 | 27 |  |  | 0d |  | 1h |  |
| 29 | 1.4.19 | Tests d'acceptation |  | 1h | 2018-06-04 15:15 | 2018-06-05 08:10 | 28 |  |  | 0d |  | 1h |  |
| 30 | 1.5 | Documentation de la réalisation |  | 5h | 2018-06-05 08:10 | 2018-06-05 14:50 | 29 |  |  | 0d |  | 5h |  |
| 31 | 1.6 | Documentation finale |  | 5h | 2018-06-05 14:50 | 2018-06-06 11:40 | 30 |  |  | 0d |  | 5h |  |
| 32 | 1.7 | Documentation continue | manual | 90h | 2018-05-08 09:00 A | 2018-06-06 11:40 |  |  | 90h |  |  | 90h |  |
